# TT_ProjectSchedule

Schedule from MS Project, 2015-05-13 to 2015-08-27.
FPT

## Calendars

- Standard: Mon-Fri 08:00-12:00, 13:00-17:00; Sat-Sun off.

## Resources

| Resource |
| --- |
| DucHN |
| HaiDT |
| HoangNM |
| ThuyLM |
| LucPT |
| HieuTM |
| 4 |
| 3 |
| 63 |
| 65 |
| 67 |

## Schedule

| ID | WBS | Task | Duration | Start | Finish | Predecessors | Total slack | Free slack |
| --- | --- | --- | --- | --- | --- | --- | --- | --- |
| 1 | 1 | **Fly Away Plus** | 77d | 2015-05-13 | 2015-08-27 |  | 0d |  |
| 2 | 1.1 | **Initiation** | 12d | 2015-05-13 | 2015-05-28 |  | 0d |  |
| 3 | 1.1.1 | Form up team roles | 0.5d | 2015-05-13 | 2015-05-13 |  | 57.5d |  |
| 4 | 1.1.2 | Uniform idea meeting | 0.5d | 2015-05-13 | 2015-05-13 |  | 0.5d | 0d |
| 5 | 1.1.3 | **Project Clarification** | 0.5d | 2015-05-13 | 2015-05-13 |  | 0.5d | 0d |
| 6 | 1.1.3.1 | Clarify project scope | 0.1d | 2015-05-13 | 2015-05-13 | 4 | 0.5d | 0d |
| 7 | 1.1.3.2 | Clarify technical requirements | 0.1d | 2015-05-13 | 2015-05-13 | 6 | 0.5d | 0d |
| 8 | 1.1.3.3 | Clarify rules in Team | 0.1d | 2015-05-13 | 2015-05-13 | 7 | 0.5d | 0d |
| 9 | 1.1.3.4 | Clarify working environments | 0.1d | 2015-05-13 | 2015-05-13 | 8 | 0.5d | 0d |
| 10 | 1.1.3.5 | Develop communications plan | 0.1d | 2015-05-13 | 2015-05-13 | 9 | 0.5d |  |
| 11 | 1.1.4 | List project features | 1d | 2015-05-13 | 2015-05-13 |  | 57d |  |
| 12 | 1.1.5 | Initiate Project structure | 1d | 2015-05-13 | 2015-05-13 |  | 57d |  |
| 13 | 1.1.6 | Create Coding conventions | 0.5d | 2015-05-13 | 2015-05-13 |  | 57.5d |  |
| 14 | 1.1.7 | **Environment** | 1d | 2015-05-14 | 2015-05-14 | 5 | 0.5d | 0d |
| 15 | 1.1.7.1 | Create guideline of installing and using environments | 0.5d | 2015-05-14 | 2015-05-14 |  | 0.5d | 0d |
| 16 | 1.1.7.2 | Setup TortoiseGit | 0.5d | 2015-05-14 | 2015-05-14 | 15 | 0.5d |  |
| 17 | 1.1.7.3 | Setup Visual Studio 2013 Ultimate | 0.5d | 2015-05-14 | 2015-05-14 |  | 0.5d |  |
| 18 | 1.1.7.4 | Setup Microsoft SQL Server 2012 | 0.5d | 2015-05-14 | 2015-05-14 |  | 0.5d |  |
| 19 | 1.1.7.5 | Training environments meeting | 0.5d | 2015-05-14 | 2015-05-14 |  | 0.5d |  |
| 20 | 1.1.8 | **Technology research** | 9d | 2015-05-15 | 2015-05-27 | 14 | 1d |  |
| 21 | 1.1.8.1 | Research technologies to be used in project | 3d | 2015-05-15 | 2015-05-19 |  | 9d |  |
| 22 | 1.1.8.2 | Study .NET MVC5 | 4d | 2015-05-15 | 2015-05-20 |  | 1d | 0d |
| 23 | 1.1.8.3 | Study Bootstrap | 1d | 2015-05-21 | 2015-05-21 | 22 | 1d | 0d |
| 24 | 1.1.8.4 | Study Javascript, jQuery | 4d | 2015-05-22 | 2015-05-27 | 23 | 1d |  |

| ID | WBS | Task | Type | Duration | Start | Finish | Predecessors | Total slack | Free slack |
| --- | --- | --- | --- | --- | --- | --- | --- | --- | --- |
| 25 | 1.1.9 | **Project Introduction** |  | 5.5d | 2015-05-15 | 2015-05-22 |  | 0.5d | 0d |
| 26 | 1.1.9.1 | Create "Project Introduction" document |  | 3d | 2015-05-15 | 2015-05-19 | 14 | 0.5d | 0d |
| 27 | 1.1.9.2 | Peer review "Project Introduction" document |  | 0.5d | 2015-05-20 | 2015-05-20 | 26 | 0.5d | 0d |
| 28 | 1.1.9.3 | Update "Project Introduction" document draft |  | 1d | 2015-05-20 | 2015-05-21 | 27 | 0.5d | 0d |
| 29 | 1.1.9.4 | Update "Project Introduction" based on instructor's comments |  | 1d | 2015-05-21 | 2015-05-22 | 28 | 0.5d | 0d |
| 30 | 1.1.9.5 | Summit Project Introduction | milestone | 0d | 2015-05-22 | 2015-05-22 | 29 | 0.5d |  |
| 31 | 1.1.10 | Kick-off meeting |  | 0.5d | 2015-05-22 | 2015-05-22 | 25 | 6d |  |
| 32 | 1.1.11 | **Q&A sheet** |  | 1.5d | 2015-05-22 | 2015-05-25 | 25 | 3d |  |
| 33 | 1.1.11.1 | Create Q&A |  | 0.5d | 2015-05-22 | 2015-05-22 |  | 5d | 0d |
| 34 | 1.1.11.2 | Update Q&A sheet |  | 0.5d | 2015-05-25 | 2015-05-25 | 33 | 5d | 0d |
| 35 | 1.1.11.3 | Translate Q&A sheet |  | 0.5d | 2015-05-25 | 2015-05-25 | 34 | 5d |  |
| 36 | 1.1.12 | **Project Plan** |  | 12d | 2015-05-13 | 2015-05-28 |  | 0d |  |
| 37 | 1.1.12.1 | Develop project definition |  | 2d | 2015-05-13 | 2015-05-14 |  | 0d |  |
| 38 | 1.1.12.2 | Work BreakDown Structure |  | 3d | 2015-05-15 | 2015-05-19 | 37 | 0d |  |
| 39 | 1.1.12.3 | Create project schedule document |  | 3d | 2015-05-20 | 2015-05-22 | 38 | 0d |  |
| 40 | 1.1.12.4 | Create project plan document |  | 1d | 2015-05-25 | 2015-05-25 | 39 | 0d |  |
| 41 | 1.1.12.5 | Create CM Plan document |  | 0.5d | 2015-05-26 | 2015-05-26 | 40 | 0d |  |
| 42 | 1.1.12.6 | Review & get comment of Project Plan |  | 0.5d | 2015-05-26 | 2015-05-26 | 41 | 0d |  |
| 43 | 1.1.12.7 | Develop Risk Register |  | 0.5d | 2015-05-27 | 2015-05-27 | 42 | 3.5d |  |
| 44 | 1.1.12.8 | Update Project Plan documents (Schedule, Project Plan in MS Word, CM Plan) |  | 1d | 2015-05-27 | 2015-05-27 | 42 | 0d |  |
| 45 | 1.1.12.9 | Create PP Review check list |  | 0.5d | 2015-05-28 | 2015-05-28 | 44 | 0d |  |
| 46 | 1.1.12.10 | Summit Project Plan Final version | milestone | 0d | 2015-05-28 | 2015-05-28 | 45FS+0.5d | 0d |  |
| 47 | 1.1.13 | **Requirement** |  | 4d | 2015-05-22 | 2015-05-28 | 25 | 0.5d |  |
| 48 | 1.1.13.1 | **User Requirement** |  | 2d | 2015-05-22 | 2015-05-26 |  | 0.5d | 0d |
| 49 | 1.1.13.1.1 | Develop brief "User Requirements Specification" document |  | 1d | 2015-05-22 | 2015-05-25 |  | 0.5d | 0d |
| 50 | 1.1.13.1.2 | Peer review brief "User Requirements Specification" document |  | 0.5d | 2015-05-25 | 2015-05-25 | 49 | 0.5d | 0d |
| 51 | 1.1.13.1.3 | Update brief "User Requirements Specification" document |  | 0.5d | 2015-05-26 | 2015-05-26 | 50 | 0.5d |  |

| ID | WBS | Task | Type | Duration | Start | Finish | Predecessors | Total slack | Free slack |
| --- | --- | --- | --- | --- | --- | --- | --- | --- | --- |
| 52 | 1.1.13.2 | **Mock-up screens** |  | 2d | 2015-05-26 | 2015-05-28 | 48 | 0.5d |  |
| 53 | 1.1.13.2.1 | Collect business requirements and processes |  | 0.5d | 2015-05-26 | 2015-05-26 |  | 0.5d | 0d |
| 54 | 1.1.13.2.2 | Develop main features' mockup screens |  | 1d | 2015-05-27 | 2015-05-27 | 53 | 0.5d | 0d |
| 55 | 1.1.13.2.3 | Review and edit screen main features' mockup screens |  | 0.5d | 2015-05-28 | 2015-05-28 | 54 | 0.5d | 0d |
| 56 | 1.1.13.3 | Complete main features' mockup screens | milestone | 0d | 2015-05-28 | 2015-05-28 | 55 | 0.5d |  |
| 57 | 1.2 | **Solution** |  | 21d | 2015-05-29 | 2015-06-26 | 2 | 0d |  |
| 58 | 1.2.1 | **Sofware Requirement Specification** |  | 10d | 2015-05-29 | 2015-06-11 |  | 0d |  |
| 59 | 1.2.1.1 | Complete mock-up screens |  | 2d | 2015-05-29 | 2015-06-01 |  | 8d |  |
| 60 | 1.2.1.2 | **Functional Requirement Specification** |  | 9d | 2015-05-29 | 2015-06-10 |  | 0d |  |
| 61 | 1.2.1.2.1 | **Part 1** |  | 4d | 2015-05-29 | 2015-06-03 |  | 0d |  |
| 62 | 1.2.1.2.1.1 | Homepage Module |  | 1d | 2015-05-29 | 2015-05-29 |  | 3d |  |
| 63 | 1.2.1.2.1.2 | User personal page Module |  | 1d | 2015-05-29 | 2015-05-29 |  | 0d |  |
| 64 | 1.2.1.2.1.3 | Admin Module |  | 1d | 2015-06-01 | 2015-06-01 | 63 | 2d |  |
| 65 | 1.2.1.2.1.4 | Search Module |  | 1d | 2015-06-01 | 2015-06-01 | 63 | 0d |  |
| 66 | 1.2.1.2.1.5 | Login/Logout Module |  | 1d | 2015-06-02 | 2015-06-02 | 65 | 1d |  |
| 67 | 1.2.1.2.1.6 | Friend Module |  | 1d | 2015-06-02 | 2015-06-02 | 65 | 0d |  |
| 68 | 1.2.1.2.1.7 | Room module |  | 1d | 2015-06-03 | 2015-06-03 | 67 | 0d |  |
| 69 | 1.2.1.2.2 | **Part 2** |  | 3d | 2015-06-08 | 2015-06-10 | 61FS+2d | 0d |  |
| 70 | 1.2.1.2.2.1 | Suggestion Module |  | 1d | 2015-06-08 | 2015-06-08 |  | 2d |  |
| 71 | 1.2.1.2.2.2 | Sharing Module |  | 1d | 2015-06-08 | 2015-06-08 |  | 0d |  |
| 72 | 1.2.1.2.2.3 | Report Module |  | 1d | 2015-06-09 | 2015-06-09 | 71 | 1d |  |
| 73 | 1.2.1.2.2.4 | Planing trip helper Module |  | 1d | 2015-06-09 | 2015-06-09 | 71 | 0d |  |
| 74 | 1.2.1.2.2.5 | Chat module |  | 1d | 2015-06-10 | 2015-06-10 | 73 | 0d |  |
| 75 | 1.2.1.3 | **Non-functional Requirements Specification** |  | 1d | 2015-06-11 | 2015-06-11 | 69 | 11d |  |
| 76 | 1.2.1.3.1 | Develop User Interface requirements |  | 1d | 2015-06-11 | 2015-06-11 |  | 11d |  |
| 77 | 1.2.1.3.2 | Develop Performance requirements |  | 1d | 2015-06-11 | 2015-06-11 |  | 11d |  |

| ID | WBS | Task | Type | Duration | Start | Finish | Predecessors | Total slack | Free slack |
| --- | --- | --- | --- | --- | --- | --- | --- | --- | --- |
| 78 | 1.2.2 | **System Architectural Design** |  | 5d | 2015-05-29 | 2015-06-04 |  | 4d | 0d |
| 79 | 1.2.2.1 | Define the system structure and unify system features |  | 2d | 2015-05-29 | 2015-06-01 |  | 4d | 0d |
| 80 | 1.2.2.2 | Study the common System Architetures |  | 1d | 2015-06-02 | 2015-06-02 | 79 | 4d | 0d |
| 81 | 1.2.2.3 | Make choice of System Architeture |  | 1d | 2015-06-03 | 2015-06-03 | 80 | 4d | 0d |
| 82 | 1.2.2.4 | Complete Architecture Design version 1.0 | milestone | 0d | 2015-06-04 | 2015-06-04 | 81FS+1d | 4d |  |
| 83 | 1.2.3 | **Detailed Design** |  | 15d | 2015-06-08 | 2015-06-26 | 78 | 0d |  |
| 84 | 1.2.3.1 | **Database design** |  | 7d | 2015-06-11 | 2015-06-19 | 60 | 0d |  |
| 85 | 1.2.3.1.1 | Organize information to Database tables |  | 3d | 2015-06-11 | 2015-06-15 |  | 0d |  |
| 86 | 1.2.3.1.2 | Define tables' relationships |  | 1d | 2015-06-16 | 2015-06-16 | 85 | 0d |  |
| 87 | 1.2.3.1.3 | Apply normalization rules to Database design |  | 1d | 2015-06-17 | 2015-06-17 | 86 | 0d |  |
| 88 | 1.2.3.1.4 | Refine Database design |  | 2d | 2015-06-18 | 2015-06-19 | 87 | 0d |  |
| 89 | 1.2.3.2 | Refine Database Design |  | 1d | 2015-06-22 | 2015-06-22 | 84 | 4d |  |
| 90 | 1.2.3.3 | **Screen design** |  | 3d | 2015-06-08 | 2015-06-10 |  | 7d |  |
| 91 | 1.2.3.3.1 | Create Screen Flow digram |  | 1d | 2015-06-08 | 2015-06-08 | 78FS+1d | 7d | 0d |
| 92 | 1.2.3.3.2 | Create Screen Definition |  | 1d | 2015-06-09 | 2015-06-09 | 91 | 7d | 0d |
| 93 | 1.2.3.3.3 | Create Screen Design |  | 1d | 2015-06-10 | 2015-06-10 | 92 | 7d |  |
| 94 | 1.2.3.4 | **Class/Component Design** |  | 5d | 2015-06-22 | 2015-06-26 | 90 | 0d |  |
| 95 | 1.2.3.4.1 | Create Data models |  | 1d | 2015-06-22 | 2015-06-22 | 84 | 0d |  |
| 96 | 1.2.3.4.2 | List components of the system |  | 1d | 2015-06-23 | 2015-06-23 | 95 | 0d |  |
| 97 | 1.2.3.4.3 | Break modules into classes |  | 1d | 2015-06-24 | 2015-06-24 | 96 | 0d |  |
| 98 | 1.2.3.4.4 | Create Class diagram |  | 2d | 2015-06-25 | 2015-06-26 | 97 | 0d |  |
| 99 | 1.2.3.4.5 | Create Class description document |  | 1d | 2015-06-25 | 2015-06-25 | 97 | 1d |  |
| 100 | 1.2.3.4.6 | Create Flow diagram |  | 1d | 2015-06-24 | 2015-06-24 | 96 | 0d |  |
| 101 | 1.2.3.4.7 | Create Progress Report 2 |  | 1d | 2015-06-25 | 2015-06-25 | 100 | 0d |  |
| 102 | 1.2.3.4.8 | Create Design review checklists |  | 1d | 2015-06-26 | 2015-06-26 | 101 | 0d |  |

| ID | WBS | Task | Type | Duration | Start | Finish | Predecessors | Total slack | Free slack |
| --- | --- | --- | --- | --- | --- | --- | --- | --- | --- |
| 103 | 1.2.4 | **Project Management** |  | 2d | 2015-06-05 | 2015-06-08 | 78 | 14d |  |
| 104 | 1.2.4.1 | Update project plan |  | 2d | 2015-06-05 | 2015-06-08 |  | 14d |  |
| 105 | 1.2.4.2 | Coding About/Contact Page |  | 2d | 2015-06-05 | 2015-06-08 |  | 14d |  |
| 106 | 1.2.4.3 | Coding Login with Facebook and Google+ feature |  | 1d | 2015-06-05 | 2015-06-05 |  | 15d |  |
| 107 | 1.2.5 | **Test** |  | 7d | 2015-05-29 | 2015-06-08 |  | 14d |  |
| 108 | 1.2.5.1 | Create Test plan |  | 3d | 2015-05-29 | 2015-06-02 |  | 14d | 0d |
| 109 | 1.2.5.2 | Review + Update Test plan |  | 1d | 2015-06-03 | 2015-06-03 | 108 | 14d | 0d |
| 110 | 1.2.5.3 | Test plan approved | milestone | 0d | 2015-06-03 | 2015-06-03 | 109 | 14d | 0d |
| 111 | 1.2.5.4 | Start writing Test cases |  | 3d | 2015-06-04 | 2015-06-08 | 110 | 14d |  |
| 112 | 1.3 | **Construction** |  | 37d | 2015-06-26 | 2015-08-18 | 57 | 0d |  |
| 113 | 1.3.1 | **Design** |  | 3d | 2015-06-29 | 2015-07-01 |  | 0d |  |
| 114 | 1.3.1.1 | Refine Design document |  | 3d | 2015-06-29 | 2015-07-01 |  | 0d |  |
| 115 | 1.3.2 | **Coding** |  | 17d | 2015-07-02 | 2015-07-24 | 113 | 0d |  |
| 116 | 1.3.2.1 | Build prototype |  | 2d | 2015-07-02 | 2015-07-03 |  | 0d |  |
| 117 | 1.3.2.2 | Prototype approved | milestone | 0d | 2015-07-03 | 2015-07-03 | 116 | 0d |  |
| 118 | 1.3.2.3 | **Coding product (Continue)** |  | 13d | 2015-07-06 | 2015-07-22 | 117 | 0d |  |
| 119 | 1.3.2.3.1 | Develop UI |  | 1w | 2015-07-06 | 2015-07-10 |  | 0d |  |
| 120 | 1.3.2.3.2 | Develop objects |  | 2d | 2015-07-06 | 2015-07-07 | 119SS | 0d |  |
| 121 | 1.3.2.3.3 | Create system documentation |  | 3d | 2015-07-06 | 2015-07-08 | 120SS | 12d |  |
| 122 | 1.3.2.3.4 | **Coding Modules** |  | 10d | 2015-07-09 | 2015-07-22 | 120FS+1d | 0d |  |
| 123 | 1.3.2.3.4.1 | **Part 1** |  | 5d | 2015-07-09 | 2015-07-15 |  | 0d |  |
| 124 | 1.3.2.3.4.1.1 | Homepage Module |  | 2d | 2015-07-09 | 2015-07-10 |  | 0d |  |
| 125 | 1.3.2.3.4.1.2 | User personal page Module |  | 1d | 2015-07-13 | 2015-07-13 | 124 | 0d |  |
| 126 | 1.3.2.3.4.1.3 | Admin Module |  | 2d | 2015-07-09 | 2015-07-10 | 124SS | 0d |  |
| 127 | 1.3.2.3.4.1.4 | Search Module |  | 1d | 2015-07-13 | 2015-07-13 | 126 | 0d |  |
| 128 | 1.3.2.3.4.1.5 | Login/Logout Module |  | 1d | 2015-07-13 | 2015-07-13 | 127SS | 0d |  |
| 129 | 1.3.2.3.4.1.6 | Friend Module |  | 2d | 2015-07-14 | 2015-07-15 | 125 | 0d |  |
| 130 | 1.3.2.3.4.1.7 | Room module |  | 2d | 2015-07-14 | 2015-07-15 | 128 | 0d |  |

| ID | WBS | Task | Type | Duration | Start | Finish | Predecessors | Total slack | Free slack |
| --- | --- | --- | --- | --- | --- | --- | --- | --- | --- |
| 131 | 1.3.2.3.4.2 | **Part 2** |  | 4d | 2015-07-17 | 2015-07-22 | 123FS+1d | 0d |  |
| 132 | 1.3.2.3.4.2.1 | Suggestion Module |  | 2d | 2015-07-17 | 2015-07-20 |  | 0d |  |
| 133 | 1.3.2.3.4.2.2 | Sharing Module |  | 1d | 2015-07-21 | 2015-07-21 | 132 | 0d |  |
| 134 | 1.3.2.3.4.2.3 | Report Module |  | 1d | 2015-07-22 | 2015-07-22 | 133 | 0d |  |
| 135 | 1.3.2.3.4.2.4 | Chat module |  | 2d | 2015-07-17 | 2015-07-20 | 132SS | 0d |  |
| 136 | 1.3.2.3.4.2.5 | Planing trip helper Module |  | 2d | 2015-07-21 | 2015-07-22 | 135 | 0d |  |
| 137 | 1.3.2.4 | Product development completes | milestone | 0d | 2015-07-24 | 2015-07-24 | 122FS+2d | 0d |  |
| 138 | 1.3.3 | **Testing** |  | 37d | 2015-06-26 | 2015-08-18 | 107 | 0d |  |
| 139 | 1.3.3.1 | **Writing Test cases (Continue)** |  | 15d | 2015-06-29 | 2015-07-17 |  | 22d |  |
| 140 | 1.3.3.1.1 | Create Integration Test Case |  | 1w | 2015-06-29 | 2015-07-03 |  | 22d | 0d |
| 141 | 1.3.3.1.2 | Update and review Integration Test Case |  | 3d | 2015-07-08 | 2015-07-10 | 140FS+2d | 22d | 0d |
| 142 | 1.3.3.1.3 | Create System Test Case |  | 3d | 2015-07-13 | 2015-07-15 | 141 | 22d | 0d |
| 143 | 1.3.3.1.4 | Update and review System Test Case |  | 2d | 2015-07-16 | 2015-07-17 | 142 | 22d |  |
| 144 | 1.3.3.2 | Writing Test cases completes | milestone | 0d | 2015-06-26 | 2015-06-26 |  | 37d |  |
| 145 | 1.3.3.3 | **Execute Test** |  | 17d | 2015-07-27 | 2015-08-18 | 115 | 0d |  |
| 146 | 1.3.3.3.1 | **Execute Test Part 1** |  | 8d | 2015-07-27 | 2015-08-05 |  | 0d |  |
| 147 | 1.3.3.3.1.1 | Execute Component Test |  | 2d | 2015-07-27 | 2015-07-28 |  | 0d |  |
| 148 | 1.3.3.3.1.2 | Fix bug Component Test |  | 2d | 2015-07-29 | 2015-07-30 | 147 | 4d |  |
| 149 | 1.3.3.3.1.3 | Execute Integration Test |  | 2d | 2015-07-29 | 2015-07-30 | 147 | 0d |  |
| 150 | 1.3.3.3.1.4 | Fix bug Integration Test |  | 2d | 2015-07-31 | 2015-08-03 | 149 | 2d |  |
| 151 | 1.3.3.3.1.5 | Execute System Test |  | 2d | 2015-07-31 | 2015-08-03 | 149 | 0d |  |
| 152 | 1.3.3.3.1.6 | Fix bug System Test |  | 2d | 2015-08-04 | 2015-08-05 | 151 | 0d |  |
| 153 | 1.3.3.3.2 | **Execute Test Part 2** |  | 8d | 2015-08-06 | 2015-08-17 | 146 | 0d |  |
| 154 | 1.3.3.3.2.1 | Execute Component Test |  | 2d | 2015-08-06 | 2015-08-07 |  | 0d |  |
| 155 | 1.3.3.3.2.2 | Fix bug Component Test |  | 2d | 2015-08-10 | 2015-08-11 | 154 | 5d |  |
| 156 | 1.3.3.3.2.3 | Execute Integration Test |  | 2d | 2015-08-10 | 2015-08-11 | 154 | 0d |  |
| 157 | 1.3.3.3.2.4 | Fix bug Integration Test |  | 2d | 2015-08-12 | 2015-08-13 | 156 | 3d |  |
| 158 | 1.3.3.3.2.5 | Execute System Test |  | 2d | 2015-08-12 | 2015-08-13 | 156 | 0d |  |
| 159 | 1.3.3.3.2.6 | Fix bug System Test |  | 2d | 2015-08-14 | 2015-08-17 | 158 | 0d |  |
| 160 | 1.3.3.3.3 | Create Test Report first verstion |  | 1d | 2015-08-18 | 2015-08-18 | 159 | 0d |  |
| 161 | 1.3.3.3.4 | Complete Testing | milestone | 0d | 2015-08-18 | 2015-08-18 | 160 | 0d |  |

| ID | WBS | Task | Duration | Start | Finish | Predecessors | Total slack | Free slack |
| --- | --- | --- | --- | --- | --- | --- | --- | --- |
| 162 | 1.3.4 | **User Manual** | 2d | 2015-07-27 | 2015-07-28 | 115 | 15d |  |
| 163 | 1.3.4.1 | Create Installation guideline | 1d | 2015-07-27 | 2015-07-27 |  | 15d | 0d |
| 164 | 1.3.4.2 | Create User guideline | 1d | 2015-07-27 | 2015-07-27 | 163SS | 15d | 0d |
| 165 | 1.3.4.3 | Review + Update guidelines | 1d | 2015-07-28 | 2015-07-28 | 164 | 15d |  |
| 166 | 1.3.5 | **Manage development** | 5d | 2015-07-02 | 2015-07-08 | 115SS | 29d |  |
| 167 | 1.3.5.1 | **Manage scope/cost/time** | 5d | 2015-07-02 | 2015-07-08 |  | 29d |  |
| 168 | 1.3.5.1.1 | Monitor product changes | 1w | 2015-07-02 | 2015-07-08 |  | 29d |  |
| 169 | 1.3.5.1.2 | Monitor project changes | 1w | 2015-07-02 | 2015-07-08 |  | 29d |  |
| 170 | 1.3.5.2 | **Manage communications** | 1d | 2015-07-02 | 2015-07-02 |  | 33d |  |
| 171 | 1.3.5.2.1 | **Implement communications methods and strategies** | 1d | 2015-07-02 | 2015-07-02 |  | 33d |  |
| 172 | 1.3.5.2.1.1 | Select tools | 1d | 2015-07-02 | 2015-07-02 |  | 33d |  |
| 173 | 1.3.5.2.2 | **Distribute information** | 1d | 2015-07-02 | 2015-07-02 |  | 33d |  |
| 174 | 1.3.5.2.2.1 | Attend team meeting | 1d | 2015-07-02 | 2015-07-02 |  | 33d |  |
| 175 | 1.3.5.2.2.2 | Create status reports | 1d | 2015-07-02 | 2015-07-02 |  | 33d |  |
| 176 | 1.3.5.2.2.3 | Create Weekly Report | 1d | 2015-07-02 | 2015-07-02 |  | 33d |  |
| 177 | 1.3.5.2.3 | Resolve communications problems | 1d | 2015-07-02 | 2015-07-02 |  | 33d |  |
| 178 | 1.3.5.3 | **Manage quality control** | 1d | 2015-07-02 | 2015-07-02 |  | 33d |  |
| 179 | 1.3.5.3.1 | Monitor product quality | 1d | 2015-07-02 | 2015-07-02 |  | 33d |  |
| 180 | 1.3.5.3.2 | **Monitor project quality** | 1d | 2015-07-02 | 2015-07-02 |  | 33d |  |
| 181 | 1.3.5.3.2.1 | Implement process improvements | 1d | 2015-07-02 | 2015-07-02 |  | 33d |  |
| 182 | 1.3.5.4 | **Manage risk** | 1d | 2015-07-02 | 2015-07-02 |  | 33d |  |
| 183 | 1.3.5.4.1 | Monitor risks | 1d | 2015-07-02 | 2015-07-02 |  | 33d |  |
| 184 | 1.3.5.4.2 | Specify responses | 1d | 2015-07-02 | 2015-07-02 |  | 33d |  |
| 185 | 1.3.5.5 | Manage integration | 1d | 2015-07-02 | 2015-07-02 |  | 33d |  |

| ID | WBS | Task | Duration | Start | Finish | Predecessors | Total slack |
| --- | --- | --- | --- | --- | --- | --- | --- |
| 186 | 1.4 | **Termination** | 7d | 2015-08-19 | 2015-08-27 | 112 | 0d |
| 187 | 1.4.1 | **Pre-Closing** | 2d | 2015-08-19 | 2015-08-20 |  | 0d |
| 188 | 1.4.1.1 | Training presentation | 2d | 2015-08-19 | 2015-08-20 |  | 0d |
| 189 | 1.4.2 | **Closing** | 4d | 2015-08-24 | 2015-08-27 | 187FS+1d | 0d |
| 190 | 1.4.2.1 | Prepare for presentation | 3d | 2015-08-24 | 2015-08-26 |  | 0d |
| 191 | 1.4.2.2 | Represent Capstone Project and Completed | 1d | 2015-08-27 | 2015-08-27 | 190 | 0d |
